# 开发计划

Schedule from MS Project, 2002-02-01 to 2002-11-16.
zhejiangdaxue

## Calendars

- 标准: Mon-Fri 08:00-12:00, 13:00-17:00; Sat-Sun off. Exceptions (off unless hours are given): 2002-03-02 08:00-12:00, 13:00-17:00, 2002-04-07 08:00-12:00, 13:00-17:00.

## Resources

| Resource |
| --- |
| 尹建伟 |
| 各个Task Leader |
| 冯志林和董欣 |
| 曹海强 |
| 李欣 |
| 王刚 |
| 周建成 |
| 王如心 |
| 董欣 |
| 冯志林 |
| 李欣和曹海强 |

## Schedule

| ID | Task | Duration | Start | Finish | Total slack | Constraint | Resources | Work |
| --- | --- | --- | --- | --- | --- | --- | --- | --- |
| 1 | 立项阶段(CR) | 37d | 2002-02-01 | 2002-03-24 | 79d | finish no earlier than 2002-03-24 | 尹建伟 | 296h |
| 2 | 编写立项报告 | 21d | 2002-02-01 | 2002-03-01 | 95d | finish no earlier than 2002-03-01 | 尹建伟 | 168h |
| 3 | 签订项目开发合同 | 16d | 2002-03-02 | 2002-03-24 | 79d | finish no earlier than 2002-03-24 | 尹建伟 | 128h |
| 4 | 需求阶段(SRM) | 29d | 2002-03-25 | 2002-05-01 | 50d | start no earlier than 2002-03-25 | 尹建伟 | 232h |
| 5 | 研究国内外的具体系统和国际标准，并撰写学习报告 | 11d | 2002-03-25 | 2002-04-07 | 68d | finish no earlier than 2002-04-07 | 尹建伟 | 88h |
| 6 | 调查公司对工作流管理系统的要求 | 10d | 2002-04-08 | 2002-04-19 | 58d | start no earlier than 2002-04-08 | 尹建伟 | 80h |
| 7 | 撰写系统需求规格说明书，并组织评审 | 8d | 2002-04-22 | 2002-05-01 | 50d | start no earlier than 2002-04-22 | 尹建伟 | 64h |
| 8 | 计划阶段(SPP) | 5d | 2002-04-25 | 2002-05-01 | 50d | start no earlier than 2002-04-25 | 尹建伟 | 40h |
| 9 | 根据评审后的需求规格说明书撰写项目计划书 | 5d | 2002-04-25 | 2002-05-01 | 50d | start no earlier than 2002-04-25 | 尹建伟 | 40h |
| 10 | 评审项目计划书 | 5d | 2002-04-25 | 2002-05-01 | 50d | start no earlier than 2002-04-25 | 尹建伟 | 40h |
| 11 | 概要设计阶段(SDS) | 31d | 2002-04-26 | 2002-06-07 | 23d | start no earlier than 2002-04-26 | 尹建伟 | 248h |
| 12 | 开发平台的选择 | 4d | 2002-04-26 | 2002-05-01 | 50d | start no earlier than 2002-04-26 | 各个Task Leader | 32h |
| 13 | 确定工作流元模型、组织模型、XML格式的元模型 | 16d | 2002-04-26 | 2002-05-19 | 38d | finish no earlier than 2002-05-19 | 冯志林和董欣 | 128h |
| 14 | 工作流集成方式，及各个用户Case的集成方式的说明 | 16d | 2002-04-26 | 2002-05-19 | 38d | finish no earlier than 2002-05-19 | 曹海强 | 128h |
| 15 | 工作流引擎实现技术的研究 | 16d | 2002-04-26 | 2002-05-19 | 38d | finish no earlier than 2002-05-19 | 李欣 | 128h |
| 16 | 模块的体系结构（功能组件组成、各个对象的UML图、系统的工作机理（Sequence图）） | 5d | 2002-05-20 | 2002-05-26 | 33d | finish no earlier than 2002-05-26 | 尹建伟 | 40h |
| 17 | 系统各模块功能的细化、详细的用户界面、功能组件对应表 | 5d | 2002-05-27 | 2002-06-02 | 28d | finish no earlier than 2002-06-02 | 各个Task Leader | 40h |
| 18 | 编写并评审概要设计说明书 | 5d | 2002-06-03 | 2002-06-08 | 23d | finish no earlier than 2002-06-08 | 尹建伟 | 40h |
| 19 | 编写并评审测试计划书 | 16d | 2002-04-26 | 2002-05-19 | 38d | finish no earlier than 2002-05-19 | 王刚 | 128h |
| 20 | 编写并评审质量保证书 | 16d | 2002-04-26 | 2002-05-19 | 38d | finish no earlier than 2002-05-19 | 周建成 | 128h |
| 21 | 编写并评审计划书 | 16d | 2002-04-26 | 2002-05-19 | 38d | finish no earlier than 2002-05-19 | 王如心 | 128h |
| 22 | 数据库设计及详细设计阶段(SDD) | 25d | 2002-06-06 | 2002-07-10 | 81d | start no earlier than 2002-06-06 | 尹建伟 | 200h |
| 23 | 进行系统的数据库设计、编写数据库设计说明书 | 5d | 2002-06-06 | 2002-06-12 | 20d | start no earlier than 2002-06-06 | 各个Task Leader | 40h |
| 24 | 评审数据库设计 | 3d | 2002-06-12 | 2002-06-15 | 18d | finish no earlier than 2002-06-15 | 尹建伟 | 24h |
| 25 | 设计系统各个对象的接口 | 5d | 2002-06-13 | 2002-06-19 | 15d | start no earlier than 2002-06-13 | 各个Task Leader | 40h |
| 26 | 设计系统各个对象的具体实现 | 7d | 2002-06-20 | 2002-06-30 | 8d | finish no earlier than 2002-06-30 | 各个Task Leader | 56h |
| 27 | 编写并评审系统详细设计书 | 8d | 2002-07-01 | 2002-07-10 | 81d | start no earlier than 2002-07-01 | 尹建伟 | 64h |
| 28 | 编写并评审测试用例说明书 | 10d | 2002-06-20 | 2002-07-03 | 97d | start no earlier than 2002-06-20 | 王刚 | 80h |
| 29 | 调整项目开发计划 | 8d | 2002-07-01 | 2002-07-10 | 81d | start no earlier than 2002-07-01 | 尹建伟 | 64h |
| 30 | 编码阶段(SC) | 82d | 2002-07-10 | 2002-10-31 | 12d | finish no earlier than 2002-10-31 | 尹建伟 | 656h |
| 31 | 熟悉开发工具 | 94d | 2002-03-01 | 2002-07-08 | 83d | start no earlier than 2002-03-01 | 各个Task Leader | 752h |
| 32 | 完成系统基础模块的开发（数据库的封装） | 4d | 2002-07-10 | 2002-07-15 | 78d | start no earlier than 2002-07-10 | 董欣 | 32h |
| 33 | 完成功能模块WF-01的开发 | 65d | 2002-07-10 | 2002-10-08 | 17d | start no earlier than 2002-07-10 | 冯志林 | 520h |
| 34 | 实现功能模块WF-02的开发 | 65d | 2002-07-10 | 2002-10-08 | 17d | start no earlier than 2002-07-10 | 李欣和曹海强 | 520h |
| 35 | 实现功能模块WF-04的开发 | 62d | 2002-07-15 | 2002-10-08 | 17d | start no earlier than 2002-07-15 | 董欣 | 496h |
| 36 | 实现功能模块WF-03的开发 | 65d | 2002-07-10 | 2002-10-08 | 17d | start no earlier than 2002-07-10 | 冯志林 | 520h |
| 37 | 配合测试工作完成功能模块WF-01的测试 | 18d | 2002-10-08 | 2002-10-31 | 11d | finish no earlier than 2002-10-31 | 冯志林 | 144h |
| 38 | 配合测试工作完成功能模块WF-03的测试 | 18d | 2002-10-08 | 2002-10-31 | 12d | start no earlier than 2002-10-08 | 李欣和曹海强 | 144h |
| 39 | 配合测试工作完成功能模块WF-04的测试 | 18d | 2002-10-08 | 2002-10-31 | 12d | start no earlier than 2002-10-08 | 董欣 | 144h |
| 40 | 配合测试工作完成功能模块WF-03的测试 | 18d? | 2002-10-08 | 2002-10-31 | 12d | start no earlier than 2002-10-08 | 冯志林 | 144h |
| 41 | 编写用户操作说明书 | 18d | 2002-10-08 | 2002-10-31 | 12d | start no earlier than 2002-10-08 | 各个Task Leader | 144h |
| 42 | 编写系统安装手册 | 18d | 2002-10-08 | 2002-10-31 | 12d | start no earlier than 2002-10-08 | 各个Task Leader | 144h |
| 43 | 编写二次开发手册 | 18d | 2002-10-08 | 2002-10-31 | 12d | start no earlier than 2002-10-08 | 各个Task Leader | 144h |
| 44 | 测试阶段(ST) | 82d | 2002-07-10 | 2002-10-31 | 12d | start no earlier than 2002-07-10 | 尹建伟 | 656h |
| 45 | 建立测试所需的软硬件环境 | 27d | 2002-07-10 | 2002-08-15 | 55d | start no earlier than 2002-07-10 | 王刚 | 216h |
| 46 | 编写系统的测试程序 | 22d | 2002-08-15 | 2002-09-15 | 34d | finish no earlier than 2002-09-15 | 王刚 | 176h |
| 47 | 对系统进行功能测试 | 34d | 2002-09-16 | 2002-10-31 | 12d | start no earlier than 2002-09-15 | 王刚 | 272h |
| 48 | 对系统进行性能测试 | 34d | 2002-09-16 | 2002-10-31 | 12d | finish no earlier than 2002-10-31 | 王刚 | 272h |
| 49 | 对系统进行稳定性测试 | 34d | 2002-09-16 | 2002-10-31 | 12d | finish no earlier than 2002-10-31 | 王刚 | 272h |
| 50 | 编写系统测试分析报告 | 34d | 2002-09-16 | 2002-10-31 | 12d | finish no earlier than 2002-10-31 | 王刚 | 272h |
| 51 | 评审系统测试分析报告 | 34d | 2002-09-16 | 2002-10-31 | 12d | finish no earlier than 2002-10-31 | 尹建伟 | 272h |
| 52 | 验收(SR) | 12d | 2002-10-31 | 2002-11-16 | 0d | finish no earlier than 2002-11-16 | 尹建伟 | 96h |
| 53 | 编写《面向影像的工作流管理系统V1.0项目开发总结报告》 | 5d | 2002-10-31 | 2002-11-06 | 8d | start no earlier than 2002-10-31 | 尹建伟 | 40h |
| 54 | 撰写各类验收报告 | 5d | 2002-10-31 | 2002-11-06 | 8d | start no earlier than 2002-10-31 | 尹建伟 | 40h |
| 55 | 申请验收 | 1d | 2002-11-07 | 2002-11-07 | 7d | start no earlier than 2002-11-07 | 尹建伟 | 8h |
| 56 | 项目验收 | 1d | 2002-11-15 | 2002-11-16 | 0d | finish no earlier than 2002-11-16 | 尹建伟 | 8h |
